# GANT

Schedule from MS Project, 2018-01-09 to 2018-07-26, costs in €.

## Calendars

- Standard: Mon-Fri 09:00-13:00, 14:00-18:00; Sat-Sun off.

## Resources

| Resource | Rate |
| --- | --- |
| Data analyst2 | 18 |
| Data analyst1 | 18 |
| Computer scientist1 | 19 |
| Computer scientist2 | 19 |
| Electronic Engineer | 18.04 |
| Sales Agent | 19.02 |
| Product Manager2 | 20 |
| Customer support | 18.5 |
| Marketing | 18 |
| Product Manager1 | 20 |
| Network Engineer | 19.34 |

## Schedule

| ID | WBS | Task | Type | Duration | Start | Finish | Predecessors | Total slack | Resources | Work | Cost |
| --- | --- | --- | --- | --- | --- | --- | --- | --- | --- | --- | --- |
| 1 | 1 | **XDR** |  | 142.5d? | 2018-01-09 | 2018-07-26 |  | 0d |  | 4012h | 75,182.56 |
| 2 | 1.1 | **Planning** |  | 9.5d | 2018-01-09 | 2018-01-22 |  | 0d |  | 444h | 8,562.32 |
| 3 | 1.1.1 | Identify the launch team |  | 1.5d | 2018-01-09 | 2018-01-10 |  | 0d | Network Engineer; Electronic Engineer; Marketing; Sales Agent; Customer support; Product Manager1; Product Manager2 | 84h | 1,594.8 |
| 4 | 1.1.2 | Determine sales objectives |  | 1d | 2018-01-10 | 2018-01-11 | 3 | 0d | Sales Agent; Product Manager1; Product Manager2 | 24h | 472.16 |
| 5 | 1.1.3 | Define launch goals |  | 1d | 2018-01-11 | 2018-01-12 | 4 | 0d | Product Manager1; Product Manager2 | 16h | 320 |
| 6 | 1.1.4 | **Determine partners** |  | 4d | 2018-01-12 | 2018-01-18 |  | 0d | Product Manager1; Product Manager2; Marketing | 200h | 3,867.04 |
| 7 | 1.1.4.1 | Identify auto assistance partners | manual | 1d | 2018-01-12 | 2018-01-15 | 5 |  | Product Manager1; Product Manager2; Marketing | 24h | 464 |
| 8 | 1.1.4.2 | Identify device manufacturer partners |  | 1d | 2018-01-15 | 2018-01-16 | 7 | 0d | Product Manager1; Product Manager2; Electronic Engineer; Marketing | 32h | 608.32 |
| 9 | 1.1.4.3 | Identify device distributor partners |  | 1d | 2018-01-16 | 2018-01-17 | 8 | 0d | Product Manager1; Product Manager2; Marketing | 24h | 464 |
| 10 | 1.1.4.4 | Identify data centers provider partner |  | 1d | 2018-01-17 | 2018-01-18 | 9 | 0d | Network Engineer; Product Manager2; Product Manager1 | 24h | 474.72 |
| 11 | 1.1.5 | **Establish launch budget** |  | 2d | 2018-01-18 | 2018-01-22 |  | 0d | Product Manager1; Product Manager2; Marketing; Sales Agent | 120h | 2,308.32 |
| 12 | 1.1.5.1 | Identify budget requirements |  | 1d | 2018-01-18 | 2018-01-19 | 10 | 0d | Product Manager2; Product Manager1; Marketing; Customer support | 32h | 612 |
| 13 | 1.1.5.2 | Obtain launch budget approval |  | 1d | 2018-01-19 | 2018-01-22 | 12 | 0d | Product Manager1; Product Manager2; Marketing | 24h | 464 |
| 14 | 1.1.6 | Planning complete | milestone | 0d | 2018-01-22 | 2018-01-22 | 13 | 0d |  |  |  |
| 15 | 1.2 | **Starting** |  | 15d? | 2018-01-22 | 2018-02-12 |  | 0d |  | 472h | 8,682.88 |
| 16 | 1.2.1 | Kickoff product launch |  | 1d | 2018-01-22 | 2018-01-23 | 14 | 0d | Product Manager2; Product Manager1; Network Engineer; Marketing; Customer support | 40h | 766.72 |
| 17 | 1.2.2 | **Marketing** |  | 7d | 2018-01-23 | 2018-02-01 |  | 0d | Marketing; Sales Agent; Product Manager1 | 248h | 4,537.44 |
| 18 | 1.2.2.1 | Define creative brief |  | 1d | 2018-01-23 | 2018-01-24 | 16 | 0d | Product Manager1; Product Manager2; Marketing | 24h | 464 |
| 19 | 1.2.2.2 | Review current literature and plan new requirements |  | 2d | 2018-01-24 | 2018-01-26 | 18 | 0d | Marketing [50%] | 8h | 144 |
| 20 | 1.2.2.3 | Define requirements |  | 2d | 2018-01-26 | 2018-01-30 | 19 | 0d | Marketing | 24h | 288 |
| 21 | 1.2.2.4 | Define sales presentation |  | 1d | 2018-01-30 | 2018-01-31 | 20 | 0d | Sales Agent | 8h | 152.16 |
| 22 | 1.2.2.5 | Define internal communication needs |  | 1d | 2018-01-31 | 2018-02-01 | 21 | 0d | Marketing; Sales Agent | 16h | 296.16 |
| 23 | 1.2.3 | **Engineering** |  | 1d | 2018-02-01 | 2018-02-02 |  | 0d |  | 24h | 298.72 |
| 24 | 1.2.3.1 | Define timing product release according to market plan |  | 1d | 2018-02-01 | 2018-02-02 | 22 | 0d | Marketing; Network Engineer | 24h | 298.72 |

| ID | WBS | Task | Type | Duration | Start | Finish | Predecessors | Total slack | Resources | Work | Cost |
| --- | --- | --- | --- | --- | --- | --- | --- | --- | --- | --- | --- |
| 25 | 1.2.4 | **Manufacturing** |  | 1d | 2018-02-02 | 2018-02-05 |  | 0d | Product Manager1; Product Manager2; Electronic Engineer | 48h | 928.64 |
| 26 | 1.2.4.1 | Prepare manufacturing volumes according to sales goals |  | 1d | 2018-02-02 | 2018-02-05 | 24 | 0d | Product Manager1; Product Manager2; Electronic Engineer | 24h | 464.32 |
| 27 | 1.2.5 | **Sales** |  | 1d | 2018-02-05 | 2018-02-06 |  | 0d |  | 8h | 152.16 |
| 28 | 1.2.5.1 | Plan and train sales team |  | 1d | 2018-02-05 | 2018-02-06 | 26 | 0d | Sales Agent | 8h | 152.16 |
| 29 | 1.2.6 | **Product support** |  | 2d? | 2018-02-06 | 2018-02-08 |  | 0d |  | 48h | 936 |
| 30 | 1.2.6.1 | Plan and train support team | manual | 2d | 2018-02-06 | 2018-02-08 | 28 |  | Product Manager1; Product Manager2; Customer support | 48h | 936 |
| 31 | 1.2.7 | Supply updated requirements and budgets |  | 1d | 2018-02-08 | 2018-02-09 | 30 | 0d | Sales Agent; Marketing; Customer support; Electronic Engineer; Network Engineer | 40h | 743.2 |
| 32 | 1.2.8 | Obtain approval for updated plans and budgets |  | 1d? | 2018-02-09 | 2018-02-12 | 31 | 0d | Product Manager1; Product Manager2 | 16h | 320 |
| 33 | 1.2.9 | Starting complete | milestone | 0d | 2018-02-12 | 2018-02-12 | 32 | 0d |  |  |  |
| 34 | 1.3 | **Execution** |  | 109d | 2018-02-12 | 2018-07-13 |  | 0d |  | 2856h | 53,357.84 |
| 35 | 1.3.1 | **Marketing** |  | 7.5d | 2018-02-12 | 2018-02-21 |  | 0d |  | 60h | 1,080 |
| 36 | 1.3.1.1 | Evaluate market needs |  | 1d | 2018-02-12 | 2018-02-13 | 33 | 0d | Marketing | 8h | 144 |
| 37 | 1.3.1.2 | Design and order final packaging |  | 1d | 2018-02-13 | 2018-02-14 | 36 | 0d | Marketing | 8h | 144 |
| 38 | 1.3.1.3 | Define product documentation | manual | 1d | 2018-02-14 | 2018-02-15 | 37 |  | Marketing | 8h | 144 |
| 39 | 1.3.1.4 | Create sales presentation |  | 1d | 2018-02-15 | 2018-02-16 | 38 | 0d | Marketing | 8h | 144 |
| 40 | 1.3.1.5 | Communicate product launch details to internal organization |  | 1d | 2018-02-16 | 2018-02-19 | 39 | 0d | Marketing | 8h | 144 |
| 41 | 1.3.1.6 | Create sales and product support training |  | 1d | 2018-02-19 | 2018-02-20 | 40 | 0d | Marketing | 8h | 144 |
| 42 | 1.3.1.7 | Update product forecasts based on market analysis |  | 1d | 2018-02-20 | 2018-02-21 | 41 | 0d | Marketing | 8h | 144 |
| 43 | 1.3.1.8 | Update launch plan based on forecasts |  | 0.5d | 2018-02-21 | 2018-02-21 | 42 | 0d | Marketing | 4h | 72 |
| 44 | 1.3.2 | **Engineering** |  | 86d | 2018-02-22 | 2018-06-21 |  | 0d |  | 2512h | 46,973.6 |
| 45 | 1.3.2.1 | **In-vehicle system development** |  | 30d | 2018-02-22 | 2018-04-04 |  | 0d |  | 912h | 17,222.4 |
| 46 | 1.3.2.1.1 | Implement in-vehicle modules software |  | 15d | 2018-02-22 | 2018-03-14 | 43 | 0d | Computer scientist1; Computer scientist2; Electronic Engineer; Network Engineer | 480h | 9,045.6 |
| 47 | 1.3.2.1.2 | Implement internal communications |  | 6d | 2018-03-15 | 2018-03-22 | 46 | 0d | Computer scientist1; Computer scientist2; Network Engineer | 144h | 2,752.32 |
| 48 | 1.3.2.1.3 | Implement external communications |  | 9d | 2018-03-23 | 2018-04-04 | 47 | 0d | Computer scientist1; Computer scientist2; Network Engineer; Data analyst1 | 288h | 5,424.48 |

| ID | WBS | Task | Type | Duration | Start | Finish | Predecessors | Total slack | Resources | Work | Cost |
| --- | --- | --- | --- | --- | --- | --- | --- | --- | --- | --- | --- |
| 49 | 1.3.2.2 | **Server software development** |  | 33d | 2018-04-05 | 2018-05-21 |  | 0d |  | 928h | 17,232 |
| 50 | 1.3.2.2.1 | Signal processing software implementation |  | 25d | 2018-04-05 | 2018-05-09 | 48 | 0d | Data analyst1; Data analyst2; Computer scientist1; Computer scientist2 | 800h | 14,800 |
| 51 | 1.3.2.2.2 | Additional software | manual | 3d | 2018-05-10 | 2018-05-14 | 50 |  | Computer scientist1; Computer scientist2 | 48h | 912 |
| 52 | 1.3.2.2.3 | Database development | manual | 5d | 2018-05-15 | 2018-05-21 | 51 |  | Computer scientist1; Computer scientist2 | 80h | 1,520 |
| 53 | 1.3.2.3 | **User software development** |  | 18d | 2018-05-22 | 2018-06-14 |  | 0d |  | 432h | 8,064 |
| 54 | 1.3.2.3.1 | Development web pages |  | 9d | 2018-05-22 | 2018-06-01 | 52 | 0d | Computer scientist1; Computer scientist2; Data analyst1 | 216h | 4,032 |
| 55 | 1.3.2.3.2 | Development web app |  | 9d | 2018-06-04 | 2018-06-14 | 54 | 0d | Computer scientist2; Computer scientist1; Data analyst1 | 216h | 4,032 |
| 56 | 1.3.2.4 | Complete and test product |  | 5d | 2018-06-15 | 2018-06-21 | 55 | 0d | Network Engineer; Computer scientist1; Computer scientist2; Electronic Engineer; Data analyst1; Data analyst2 | 240h | 4,455.2 |
| 57 | 1.3.3 | **Manufacturing** |  | 6d | 2018-06-22 | 2018-06-29 |  | 0d |  | 208h | 3,879.52 |
| 58 | 1.3.3.1 | Design product |  | 1d | 2018-06-22 | 2018-06-22 | 56 | 0d | Electronic Engineer | 8h | 144.32 |
| 59 | 1.3.3.2 | Prototyping |  | 5d | 2018-06-25 | 2018-06-29 | 58 | 0d | Electronic Engineer; Computer scientist1; Computer scientist2; Data analyst1; Network Engineer | 200h | 3,735.2 |
| 60 | 1.3.4 | **Sales** |  | 4.5d | 2018-07-02 | 2018-07-06 |  | 0d |  | 36h | 684.72 |
| 61 | 1.3.4.1 | Esatablish sales channels |  | 4.5d | 2018-07-02 | 2018-07-06 | 59 | 0d | Sales Agent | 36h | 684.72 |
| 62 | 1.3.5 | **Product support** |  | 5d | 2018-07-06 | 2018-07-13 |  | 0d |  | 40h | 740 |
| 63 | 1.3.5.1 | Establish product support mechanism |  | 5d | 2018-07-06 | 2018-07-13 | 61 | 0d | Customer support | 40h | 740 |
| 64 | 1.3.6 | Execution complete | milestone | 0d | 2018-07-13 | 2018-07-13 | 63 | 0d |  |  |  |
| 65 | 1.4 | **Release to manufacturer** |  | 9d | 2018-07-13 | 2018-07-26 |  | 0d |  | 240h | 4,579.52 |
| 66 | 1.4.1 | **Manufacturing** |  | 4d | 2018-07-13 | 2018-07-19 |  | 0d |  | 96h | 1,857.28 |
| 67 | 1.4.1.1 | Certify product |  | 4d | 2018-07-13 | 2018-07-19 | 64 | 0d | Electronic Engineer; Product Manager1; Product Manager2 | 96h | 1,857.28 |
| 68 | 1.4.2 | **Sales** |  | 1d | 2018-07-19 | 2018-07-20 |  | 0d |  | 8h | 152.16 |
| 69 | 1.4.2.1 | Hire and train sales team |  | 1d | 2018-07-19 | 2018-07-20 | 67 | 0d | Sales Agent | 8h | 152.16 |
| 70 | 1.4.3 | **Product support** |  | 1d | 2018-07-20 | 2018-07-23 |  | 0d |  | 8h | 148 |
| 71 | 1.4.3.1 | Hire and train product support team |  | 1d | 2018-07-20 | 2018-07-23 | 69 | 0d | Customer support | 8h | 148 |
| 72 | 1.4.4 | **Final quolity review** |  | 3d | 2018-07-23 | 2018-07-26 |  | 0d |  | 128h | 2,422.08 |
| 73 | 1.4.4.1 | Conduct final quality review |  | 2d | 2018-07-23 | 2018-07-25 | 71 | 0d | Data analyst1; Data analyst2; Computer scientist1; Computer scientist2; Network Engineer; Electronic Engineer; Product Manager1; Product Manager2 | 128h | 2,422.08 |
| 74 | 1.4.4.2 | Training complete |  | 1d | 2018-07-25 | 2018-07-26 | 73 | 0d |  |  |  |
| 75 | 1.4.5 | Launch product | milestone | 0d | 2018-07-26 | 2018-07-26 | 74 | 0d |  |  |  |
| 76 | 1.4.6 | Release to manufacturer complete | milestone | 0d | 2018-07-26 | 2018-07-26 | 75 | 0d |  |  |  |
